# 售后维保&&远程视频监控功能开发计划

How a schedule from a web Gantt chart changed from version to version. A marks actual dates.

## Version 1 (saved 2024-04-30)

| ID | WBS | Task | Duration | Start | Finish | Predecessors |
| --- | --- | --- | --- | --- | --- | --- |
| 2 | 1 | **售后维保App** | 30d | 2024-04-15 | 2024-05-24 |  |
| 3 | 1.1 | **需求确认** | 2d | 2024-04-15 | 2024-04-16 |  |
| 4 |  | 需求确认 | 1d | 2024-04-15 | 2024-04-15 |  |
| 5 |  | 需求评审&发布 | 1d | 2024-04-16 | 2024-04-16 | 4 |
| 6 | 1.2 | **方案设计** | 18d | 2024-04-17 | 2024-05-10 |  |
| 7 |  | UX设计 | 16d | 2024-04-17 | 2024-05-08 | 5 |
| 8 |  | 接口定义 | 2d | 2024-05-09 | 2024-05-10 | 7 |
| 9 | 1.3 | **软件开发** | 5d | 2024-05-13 | 2024-05-17 |  |
| 10 |  | 云控软件开发 | 5d | 2024-05-13 | 2024-05-17 | 8 |
| 11 |  | 应用化软件开发 | 3d | 2024-05-13 | 2024-05-15 | 7, 8 |
| 12 | 1.4 | **联调测试** | 4d | 2024-05-20 | 2024-05-23 |  |
| 13 |  | 联调&自测 | 2d | 2024-05-20 | 2024-05-21 | 10, 11 |
| 14 |  | 版本提测 | 1d | 2024-05-22 | 2024-05-22 | 13 |
| 15 |  | 集成测试 | 1d | 2024-05-23 | 2024-05-23 | 14 |
| 16 |  | 功能验收 | 1d | 2024-05-24 | 2024-05-24 | 15 |
| 17 | 2 | **远程视频监控App** | 14d | 2024-04-30 | 2024-05-17 |  |
| 18 | 2.1 | **需求确认** | 1d | 2024-04-30 | 2024-04-30 |  |
| 19 |  | 需求评审发布 | 1d | 2024-04-30 | 2024-04-30 |  |
| 20 | 2.2 | **方案设计** | 5d | 2024-05-01 | 2024-05-07 |  |
| 21 |  | UX设计 | 1d | 2024-05-01 | 2024-05-01 | 19 |
| 22 |  | 视频推流方案 | 1d | 2024-05-01 | 2024-05-01 | 19 |
| 23 |  | 占位任务（51劳动节） | 3d | 2024-05-01 | 2024-05-03 |  |
| 24 | 2.4 | **接口定义** | 3d | 2024-05-06 | 2024-05-08 |  |
| 25 |  | 智能化接口定义 | 2d | 2024-05-06 | 2024-05-07 | 23 |
| 26 |  | 云控接口定义 | 1d | 2024-05-08 | 2024-05-08 | 25 |
| 27 | 2.5 | **软件开发** | 3d | 2024-05-08 | 2024-05-10 |  |
| 28 |  | 云控软件开发 | 2d | 2024-05-09 | 2024-05-10 | 26 |
| 29 |  | 智能化软件开发 | 2d | 2024-05-08 | 2024-05-09 | 25 |
| 30 |  | 应用化软件开发 | 1d | 2024-05-09 | 2024-05-09 | 25, 26 |
| 31 | 2.6 | **联调测试** | 4d | 2024-05-13 | 2024-05-16 |  |
| 32 |  | 联调自测 | 3d | 2024-05-13 | 2024-05-15 | 28, 29, 30 |
| 34 |  | 集成测试 | 1d | 2024-05-16 | 2024-05-16 | 32 |
| 35 |  | 功能验收 | 1d | 2024-05-17 | 2024-05-17 | 34 |

## Version 2 (saved 2024-04-30)

Last finish stays 2024-05-24.

Added:

| ID | Task | Duration | Start | Finish |
| --- | --- | --- | --- | --- |
| 33 | 版本提测 | 1d | 2024-05-13 | 2024-05-13 |

## Version 3 (saved 2024-04-30)

Last finish stays 2024-05-24.

Changed:

| ID | Task | Start | Finish | Duration | Predecessors |
| --- | --- | --- | --- | --- | --- |
| 17 | **远程视频监控App** |  | 2024-05-17 → 2024-05-15 (-2d) | 14d → 12d |  |
| 31 | **联调测试** |  | 2024-05-16 → 2024-05-15 (-1d) | 4d → 3d |  |
| 34 | 集成测试 | 2024-05-16 → 2024-05-14 (-2d) | 2024-05-16 → 2024-05-14 (-2d) |  | 32 → 33 |
| 35 | 功能验收 | 2024-05-17 → 2024-05-15 (-2d) | 2024-05-17 → 2024-05-15 (-2d) |  |  |
