# 机端部署App开发计划

How a schedule from a web Gantt chart changed from version to version. A marks actual dates.

## Version 1 (saved 2024-04-26)

| ID | WBS | Task | Duration | Start | Finish |
| --- | --- | --- | --- | --- | --- |
| 2 | 1 | **需求确认** | 1d | 2024-04-29 | 2024-04-29 |
| 3 |  | 需求定义 | 1d | 2024-04-29 | 2024-04-29 |
| 4 |  | 需求评审发布 | 1d | 2024-04-29 | 2024-04-29 |
| 5 |  | 成熟度定义 | 1d | 2024-04-29 | 2024-04-29 |

## Version 2 (saved 2024-04-26)

Last finish 2024-04-29 → 2024-08-21 (+114d).

Added:

| ID | Task | Duration | Start | Finish | Predecessors |
| --- | --- | --- | --- | --- | --- |
| 6 | **方案设计** | 18d | 2024-05-13 | 2024-06-05 |  |
| 7 | 系统方案设计 | 10d | 2024-05-13 | 2024-05-24 | 4 |
| 8 | 系统方案评审发布 | 3d | 2024-05-27 | 2024-05-29 | 7 |
| 9 | UX方案设计评审 | 15d | 2024-05-13 | 2024-05-31 | 4 |
| 10 | 接口定义 | 5d | 2024-05-30 | 2024-06-05 | 8 |
| 11 | **软件开发** | 32d | 2024-06-06 | 2024-07-19 |  |
| 12 | **智能化软件** | 20d | 2024-06-06 | 2024-07-03 |  |
| 13 | 代码实现 | 10d | 2024-06-06 | 2024-06-19 | 10 |
| 14 | 单元测试 | 10d | 2024-06-20 | 2024-07-03 | 13 |
| 15 | **云控系统软件** | 20d | 2024-06-06 | 2024-07-03 |  |
| 16 | 代码实现 | 10d | 2024-06-06 | 2024-06-19 | 10 |
| 17 | 单元测试 | 10d | 2024-06-20 | 2024-07-03 | 16 |
| 18 | **应用化系统软件** | 20d | 2024-06-06 | 2024-07-03 |  |
| 19 | 代码实现 | 10d | 2024-06-06 | 2024-06-19 | 9, 10 |
| 20 | 单元测试 | 10d | 2024-06-20 | 2024-07-03 | 19 |
| 21 | 功能联调 | 7d | 2024-07-04 | 2024-07-12 | 14, 17, 20 |
| 22 | 版本提测 | 5d | 2024-07-15 | 2024-07-19 | 21 |
| 23 | **集成测试** | 5d | 2024-07-22 | 2024-07-26 |  |
| 24 | 功能性能测试 | 5d | 2024-07-22 | 2024-07-26 | 22 |
| 25 | Bug修复 | 5d | 2024-07-29 | 2024-08-02 | 24 |
| 26 | 部署便利性优化 | 5d | 2024-08-05 | 2024-08-09 | 25 |
| 27 | 全性能达成 | 5d | 2024-08-12 | 2024-08-16 | 26 |
| 28 | **系统确认** | 3d | 2024-08-19 | 2024-08-21 |  |
| 29 | 产品验收 | 3d | 2024-08-19 | 2024-08-21 | 27 |

Changed:

| ID | Task | Start | Finish | Duration | Complete | Predecessors |
| --- | --- | --- | --- | --- | --- | --- |
| 2 | **需求确认** | 2024-04-29 → 2024-04-22 (-7d) | 2024-04-29 → 2024-05-14 (+15d) | 1d → 17d | 0% → 21% |  |
| 3 | 需求定义 | 2024-04-29 → 2024-04-22 (-7d) | 2024-04-29 → 2024-04-26 (-3d) | 1d → 5d | 0% → 70% |  |
| 4 | 需求评审发布 |  | 2024-04-29 → 2024-05-10 (+11d) | 1d → 10d |  | none → 3 |
| 5 | 成熟度定义 | 2024-04-29 → 2024-05-13 (+14d) | 2024-04-29 → 2024-05-14 (+15d) | 1d → 2d |  | none → 4 |
