# 机端部署App开发计划

How a schedule from a web Gantt chart changed from version to version. A marks actual dates.

## Version 1 (saved 2024-04-29)

| ID | WBS | Task | Duration | Start | Finish | Predecessors | Complete |
| --- | --- | --- | --- | --- | --- | --- | --- |
| 2 | 1 | **需求确认** | 17d | 2024-04-22 | 2024-05-14 |  | 21% |
| 3 |  | 需求定义 | 5d | 2024-04-22 | 2024-04-26 |  | 70% |
| 4 |  | 需求评审发布 | 10d | 2024-04-29 | 2024-05-10 | 3 |  |
| 5 |  | 成熟度定义 | 2d | 2024-05-13 | 2024-05-14 | 4 |  |
| 6 | 2 | **方案设计** | 18d | 2024-05-13 | 2024-06-05 |  |  |
| 7 |  | 系统方案设计 | 10d | 2024-05-13 | 2024-05-24 | 4 |  |
| 8 |  | 系统方案评审发布 | 3d | 2024-05-27 | 2024-05-29 | 7 |  |
| 9 |  | UX方案设计评审 | 15d | 2024-05-13 | 2024-05-31 | 4 |  |
| 10 |  | 接口定义 | 5d | 2024-05-30 | 2024-06-05 | 8 |  |
| 11 | 3 | **软件开发** | 32d | 2024-06-06 | 2024-07-19 |  |  |
| 12 | 3.1 | **智能化软件** | 20d | 2024-06-06 | 2024-07-03 |  |  |
| 13 |  | 代码实现 | 10d | 2024-06-06 | 2024-06-19 | 10 |  |
| 14 |  | 单元测试 | 10d | 2024-06-20 | 2024-07-03 | 13 |  |
| 15 | 3.2 | **云控系统软件** | 20d | 2024-06-06 | 2024-07-03 |  |  |
| 16 |  | 代码实现 | 10d | 2024-06-06 | 2024-06-19 | 10 |  |
| 17 |  | 单元测试 | 10d | 2024-06-20 | 2024-07-03 | 16 |  |
| 18 | 3.3 | **应用化系统软件** | 20d | 2024-06-06 | 2024-07-03 |  |  |
| 19 |  | 代码实现 | 10d | 2024-06-06 | 2024-06-19 | 9, 10 |  |
| 20 |  | 单元测试 | 10d | 2024-06-20 | 2024-07-03 | 19 |  |
| 21 |  | 功能联调 | 7d | 2024-07-04 | 2024-07-12 | 14, 17, 20 |  |
| 22 |  | 版本提测 | 5d | 2024-07-15 | 2024-07-19 | 21 |  |
| 23 | 4 | **集成测试** | 5d | 2024-07-22 | 2024-07-26 |  |  |
| 24 |  | 功能性能测试 | 5d | 2024-07-22 | 2024-07-26 | 22 |  |
| 25 |  | Bug修复 | 5d | 2024-07-29 | 2024-08-02 | 24 |  |
| 26 |  | 部署便利性优化 | 5d | 2024-08-05 | 2024-08-09 | 25 |  |
| 27 |  | 全性能达成 | 5d | 2024-08-12 | 2024-08-16 | 26 |  |
| 28 | 8 | **系统确认** | 3d | 2024-08-19 | 2024-08-21 |  |  |
| 29 |  | 产品验收 | 3d | 2024-08-19 | 2024-08-21 | 27 |  |

## Version 2 (saved 2024-04-30)

Last finish 2024-08-21 → 2024-08-13 (-8d).

Added:

| ID | Task | Duration | Start | Finish | Predecessors |
| --- | --- | --- | --- | --- | --- |
| 7 | 系统方案设计（待定） | 5d | 2024-05-13 | 2024-05-17 | 4 |
| 8 | 系统方案评审发布（待定） | 2d | 2024-05-20 | 2024-05-21 | 7 |
| 12 | **智能化软件（已完成）** | 20d | 2024-05-29 | 2024-06-25 |  |
| 15 | **云控系统软件（已完成）** | 20d | 2024-05-29 | 2024-06-25 |  |

Removed: 7 系统方案设计; 8 系统方案评审发布; 12 智能化软件; 15 云控系统软件

Changed:

| ID | Task | Start | Finish | Duration | Predecessors |
| --- | --- | --- | --- | --- | --- |
| 6 | **方案设计** |  | 2024-06-05 → 2024-05-31 (-5d) | 18d → 15d |  |
| 10 | 接口定义 | 2024-05-30 → 2024-05-22 (-8d) | 2024-06-05 → 2024-05-28 (-8d) |  | 系统方案评审发布 → 8 |
| 11 | **软件开发** | 2024-06-06 → 2024-05-29 (-8d) | 2024-07-19 → 2024-07-15 (-4d) | 32d → 34d |  |
| 13 | 代码实现 | 2024-06-06 → 2024-05-29 (-8d) | 2024-06-19 → 2024-06-11 (-8d) |  |  |
| 14 | 单元测试 | 2024-06-20 → 2024-06-12 (-8d) | 2024-07-03 → 2024-06-25 (-8d) |  |  |
| 16 | 代码实现 | 2024-06-06 → 2024-05-29 (-8d) | 2024-06-19 → 2024-06-11 (-8d) |  |  |
| 17 | 单元测试 | 2024-06-20 → 2024-06-12 (-8d) | 2024-07-03 → 2024-06-25 (-8d) |  |  |
| 18 | **应用化系统软件** | 2024-06-06 → 2024-06-03 (-3d) | 2024-07-03 → 2024-06-28 (-5d) |  |  |
| 19 | 代码实现 | 2024-06-06 → 2024-06-03 (-3d) | 2024-06-19 → 2024-06-14 (-5d) |  |  |
| 20 | 单元测试 | 2024-06-20 → 2024-06-17 (-3d) | 2024-07-03 → 2024-06-28 (-5d) |  |  |
| 21 | 功能联调 | 2024-07-04 → 2024-07-01 (-3d) |  | 7d → 10d |  |
| 22 | 版本提测 |  | 2024-07-19 → 2024-07-15 (-4d) | 5d → 1d |  |
| 23 | **集成测试** | 2024-07-22 → 2024-07-16 (-6d) | 2024-07-26 → 2024-07-18 (-8d) | 5d → 3d |  |
| 24 | 功能性能测试 | 2024-07-22 → 2024-07-16 (-6d) | 2024-07-26 → 2024-07-18 (-8d) | 5d → 3d |  |
| 25 | Bug修复 | 2024-07-29 → 2024-07-19 (-10d) | 2024-08-02 → 2024-07-25 (-8d) |  |  |
| 26 | 部署便利性优化 | 2024-08-05 → 2024-07-26 (-10d) | 2024-08-09 → 2024-08-01 (-8d) |  |  |
| 27 | 全性能达成 | 2024-08-12 → 2024-08-02 (-10d) | 2024-08-16 → 2024-08-08 (-8d) |  |  |
| 28 | **系统确认** | 2024-08-19 → 2024-08-09 (-10d) | 2024-08-21 → 2024-08-13 (-8d) |  |  |
| 29 | 产品验收 | 2024-08-19 → 2024-08-09 (-10d) | 2024-08-21 → 2024-08-13 (-8d) |  |  |
